# GW-HOSP

Schedule from MS Project XML, 2026-02-02 to 2026-11-29.

## Schedule

| ID | WBS | Task | Duration | Start | Finish | Predecessors | Total slack |
| --- | --- | --- | --- | --- | --- | --- | --- |
| 1 | 1 | **Substructure** |  |  |  |  |  |
| 2 | 1.1 | Footings & Foundations | 30d | 2026-02-02 | 2026-03-04 |  | 0d |
| 3 | 2 | **Superstructure** |  |  |  |  |  |
| 4 | 2.1 | Columns | 25d | 2026-03-04 | 2026-03-29 | 2 | 0d |
| 5 | 2.2 | Beams | 30d | 2026-03-29 | 2026-04-28 | 4 | 0d |
| 6 | 2.3 | Structural Framing | 35d | 2026-04-28 | 2026-06-02 | 5 | 0d |
| 7 | 3 | **Building Envelope** |  |  |  |  |  |
| 8 | 3.1 | External & Internal Walls | 40d | 2026-06-02 | 2026-07-12 | 6 | 0d |
| 9 | 3.2 | Curtain Walling | 25d | 2026-06-12 | 2026-07-07 | 8SS+10d | 145d |
| 10 | 3.3 | Doors & Windows | 20d | 2026-07-12 | 2026-08-01 | 8 | 0d |
| 11 | 4 | **MEP First Fix** |  |  |  |  |  |
| 12 | 4.1 | Plumbing Pipework | 45d | 2026-07-17 | 2026-08-31 | 10SS+5d | 0d |
| 13 | 4.2 | HVAC Ductwork | 50d | 2026-07-22 | 2026-09-10 | 12SS+5d | 0d |
| 14 | 4.3 | Fire Protection | 30d | 2026-07-27 | 2026-08-26 | 13SS+5d | 0d |
| 15 | 4.4 | Electrical & Lighting | 40d | 2026-08-01 | 2026-09-10 | 14SS+5d | 0d |
| 16 | 5 | **Finishes & Fit-out** |  |  |  |  |  |
| 17 | 5.1 | Internal Finishes | 35d | 2026-09-10 | 2026-10-15 | 15 | 0d |
| 18 | 5.2 | Medical Equipment & Furniture | 20d | 2026-10-15 | 2026-11-04 | 17 | 0d |
| 19 | 6 | **Commissioning** |  |  |  |  |  |
| 20 | 6.1 | MEP Commissioning | 25d | 2026-11-04 | 2026-11-29 | 15FF, 18 | 0d |
